# Bouwplanning v1.0

Schedule from an IFC model, 2027-03-01 to 2027-10-15.
Basisschool Nieuwbouw IKC

## Schedule

| ID | Activity | Type | Duration | Start | Finish | Predecessors | Planned start | Planned finish | Total float | Free float |
| --- | --- | --- | --- | --- | --- | --- | --- | --- | --- | --- |
| 1 | **1. Voorbereiding** |  | 5d | 2027-03-01 | 2027-03-11 |  | 2027-03-01 | 2027-03-05 | 0d |  |
| 1.1 | Bouwterrein klaarmaken |  | 5d | 2027-03-01 | 2027-03-05 |  |  |  | 0d |  |
| 1.2 | Bouwplaats inrichten |  | 3d | 2027-03-08 | 2027-03-10 | 1.1 | 2027-03-01 | 2027-03-03 | 135d | 0d |
| 1.3 | Start bouw | milestone | 0d | 2027-03-11 | 2027-03-11 | 1.2 | 2027-03-01 | 2027-03-01 | 135d |  |
| 2 | **2. Fundering** |  | 5d | 2027-03-05 | 2027-04-15 |  | 2027-03-01 | 2027-03-05 | 0d |  |
| 2.1 | Heien funderingspalen |  | 10d | 2027-03-05 | 2027-03-18 | 1.1 SS+4d | 2027-03-01 | 2027-03-12 | 0d |  |
| 2.2 | Funderingsbalken en poeren |  | 8d | 2027-03-19 | 2027-04-01 | 2.1 | 2027-03-01 | 2027-03-10 | 112d | 0d |
| 2.3 | Riolering onder vloer |  | 5d | 2027-04-02 | 2027-04-08 | 2.2 | 2027-03-01 | 2027-03-05 | 112d | 0d |
| 2.4 | Begane grondvloer storten |  | 5d | 2027-04-09 | 2027-04-15 | 2.3 | 2027-03-01 | 2027-03-05 | 112d |  |
| 3 | **3. Ruwbouw** |  | 5d | 2027-03-11 | 2027-05-18 |  | 2027-03-01 | 2027-03-05 | 0d |  |
| 3.1 | Begane grond metselwerk |  | 12d | 2027-03-11 | 2027-03-30 | 2.1 SS | 2027-03-01 | 2027-03-16 | 0d |  |
| 3.2 | Verdiepingsvloer prefab |  | 5d | 2027-03-31 | 2027-04-06 | 3.1 | 2027-03-01 | 2027-03-05 | 0d |  |
| 3.3 | Verdieping metselwerk |  | 10d | 2027-04-07 | 2027-04-20 | 3.2 | 2027-03-01 | 2027-03-12 | 0d |  |
| 3.4 | CLT dakconstructie |  | 8d | 2027-04-21 | 2027-05-03 | 3.3 | 2027-03-01 | 2027-03-10 | 0d |  |
| 3.5 | Dakbedekking EPDM |  | 5d | 2027-05-04 | 2027-05-12 | 3.4 | 2027-03-01 | 2027-03-05 | 0d |  |
| 3.6 | Sedum dak aanleggen |  | 3d | 2027-05-13 | 2027-05-18 | 3.5 | 2027-03-01 | 2027-03-03 | 0d |  |
| 3.7 | Hoogste punt | milestone | 0d | 2027-05-18 | 2027-05-18 | 3.6 | 2027-03-01 | 2027-03-01 | 93d |  |
| 4 | **4. Gevel & Dak** |  | 5d | 2027-05-03 | 2027-06-17 |  | 2027-03-01 | 2027-03-05 | 0d |  |
| 4.1 | Gevelisolatie ETICS |  | 10d | 2027-05-03 | 2027-05-19 | 3.6 FS-9d | 2027-03-01 | 2027-03-12 | 0d |  |
| 4.2 | Kozijnen aluminium |  | 8d | 2027-05-20 | 2027-05-31 | 4.1 | 2027-03-01 | 2027-03-10 | 0d |  |
| 4.3 | Gevelafwerking baksteen strips |  | 8d | 2027-06-01 | 2027-06-10 | 4.2 | 2027-03-01 | 2027-03-10 | 0d |  |
| 4.4 | Zonnepanelen dak |  | 5d | 2027-06-11 | 2027-06-17 | 4.3, 3.6 FF+2d | 2027-03-01 | 2027-03-05 | 0d |  |
| 4.5 | Wind- en waterdicht | milestone | 0d | 2027-06-17 | 2027-06-17 | 4.4 | 2027-03-01 | 2027-03-01 | 71d |  |
| 5 | **5. Installaties** |  | 5d | 2027-06-18 | 2027-08-25 |  | 2027-03-01 | 2027-03-05 | 0d |  |
| 5.1 | Elektra en data |  | 8d | 2027-06-18 | 2027-06-29 | 4.4 | 2027-03-01 | 2027-03-10 | 0d |  |
| 5.2 | Warmtepomp lucht-water |  | 5d | 2027-06-30 | 2027-07-06 | 5.1 | 2027-03-01 | 2027-03-05 | 37d | 0d |
| 5.3 | Vloerverwarming |  | 8d | 2027-07-02 | 2027-07-13 | 5.2 SS+2d | 2027-03-01 | 2027-03-10 | 37d | 0d |
| 5.4 | Ventilatie CO2-gestuurd |  | 8d | 2027-07-14 | 2027-07-23 | 5.3 | 2027-03-01 | 2027-03-10 | 37d | 0d |
| 5.5 | Sanitair leidingwerk |  | 5d | 2027-08-16 | 2027-08-20 | 5.4 | 2027-03-01 | 2027-03-05 | 37d | 0d |
| 5.6 | Brandmeld en ontruiming |  | 3d | 2027-08-23 | 2027-08-25 | 5.5 | 2027-03-01 | 2027-03-03 | 37d |  |

| ID | Activity | Type | Duration | Start | Finish | Predecessors | Planned start | Planned finish | Total float |
| --- | --- | --- | --- | --- | --- | --- | --- | --- | --- |
| 6 | **6. Afbouw** |  | 5d | 2027-07-15 | 2027-10-05 |  | 2027-03-01 | 2027-03-05 | 0d |
| 6.1 | Binnenwanden metal stud |  | 8d | 2027-07-15 | 2027-08-16 | 5.1 SS+19d | 2027-03-01 | 2027-03-10 | 0d |
| 6.2 | Plafonds akoestisch |  | 5d | 2027-08-17 | 2027-08-23 | 6.1 | 2027-03-01 | 2027-03-05 | 0d |
| 6.3 | Dekvloeren |  | 5d | 2027-08-24 | 2027-08-30 | 6.2 | 2027-03-01 | 2027-03-05 | 0d |
| 6.4 | Tegelwerk sanitair |  | 5d | 2027-08-31 | 2027-09-06 | 6.3 | 2027-03-01 | 2027-03-05 | 0d |
| 6.5 | Schilderwerk |  | 8d | 2027-09-07 | 2027-09-16 | 6.4 | 2027-03-01 | 2027-03-10 | 0d |
| 6.6 | Vloerafwerking linoleum |  | 5d | 2027-09-17 | 2027-09-23 | 6.5 | 2027-03-01 | 2027-03-05 | 0d |
| 6.7 | Buitenspeelplaats |  | 8d | 2027-09-24 | 2027-10-05 | 6.6 | 2027-03-01 | 2027-03-10 | 0d |
| 7 | **7. Oplevering** |  | 5d | 2027-10-06 | 2027-10-15 |  | 2027-03-01 | 2027-03-05 | 0d |
| 7.1 | Inrichting lokalen |  | 5d | 2027-10-06 | 2027-10-12 | 6.7 | 2027-03-01 | 2027-03-05 | 0d |
| 7.2 | Testen en inregelen |  | 3d | 2027-10-13 | 2027-10-15 | 7.1 | 2027-03-01 | 2027-03-03 | 0d |
| 7.3 | Oplevering IKC | milestone | 0d | 2027-10-15 | 2027-10-15 | 7.2 | 2027-03-01 | 2027-03-01 | 0d |
