# Bouwplanning v1.0

Schedule from an IFC model, 2027-03-01 to 2028-04-04, A marks actual dates.
Nieuwbouw Appartementencomplex De Vaart

## Schedule

| ID | Activity | Type | Duration | Start | Finish | Predecessors | Complete | Planned start | Planned finish | Total float | Free float | Resources |
| --- | --- | --- | --- | --- | --- | --- | --- | --- | --- | --- | --- | --- |
| 1 | Start project Appartementencomplex | milestone | 0d | 2027-03-01 A | 2027-03-01 A |  | 100% |  |  | 0d |  |  |
| 2 | **1. Voorbereiding & bouwrijp maken** |  | 5d | 2027-03-01 | 2027-04-08 |  |  | 2027-03-01 | 2027-03-05 | 0d |  |  |
| 2.1 | Sonderingen & grondonderzoek |  | 3d | 2027-03-01 A | 2027-03-04 A | 1 | 100% | 2027-03-01 | 2027-03-03 | 0d |  |  |
| 2.2 | Omgevingsvergunning verkrijgen |  | 10d | 2027-03-04 A | 2027-03-18 A | 2.1 | 100% | 2027-03-01 | 2027-03-12 | 0d |  |  |
| 2.3 | Wegafzetting gemeente (vergunde stremmingsperiode) |  | 3d | 2027-03-11 A | 2027-03-16 A | 1 | 100% | 2027-03-01 | 2027-03-03 | 0d | 1d |  |
| 2.4 | Bouwweg aanleggen |  | 4d | 2027-03-18 A | 2027-03-24 A | 2.2, 2.3 | 100% | 2027-03-01 | 2027-03-04 | 0d |  |  |
| 2.5 | Bouwketen plaatsen |  | 2d | 2027-03-24 A | 2027-03-26 A | 2.4 | 100% | 2027-03-01 | 2027-03-02 | 0d |  |  |
| 2.6 | Nutsaansluitingen aanleggen |  | 4d | 2027-03-26 A | 2027-04-01 A | 2.5 | 100% | 2027-03-01 | 2027-03-04 | 0d |  |  |
| 2.7 | Bemaling plaatsen |  | 5d | 2027-04-01 A | 2027-04-08 A | 2.6 | 100% | 2027-03-01 | 2027-03-05 | 0d |  |  |
| 2.8 | Terrein bouwrijp | milestone | 0d | 2027-04-08 A | 2027-04-08 A | 2.7 | 100% | 2027-03-01 | 2027-03-01 | 0d |  |  |
| 3 | **2. Fundering & kelder/parkeergarage** |  | 5d | 2027-04-08 | 2027-06-14 |  |  | 2027-03-01 | 2027-03-05 | 0d |  |  |
| 3.1 | Bemaling in bedrijf stellen |  | 2d | 2027-04-08 A | 2027-04-12 A | 2.8 | 100% | 2027-03-01 | 2027-03-02 | 0d |  |  |
| 3.2 | Grondwerk bouwput |  | 6d | 2027-04-12 A | 2027-04-20 A | 3.1 | 100% | 2027-03-01 | 2027-03-08 | 0d |  |  |
| 3.3 | Damwanden plaatsen |  | 5d | 2027-04-20 A | 2027-04-27 A | 3.2 | 100% | 2027-03-01 | 2027-03-05 | 0d |  |  |
| 3.4 | Funderingsbalken storten (gezamenlijk) |  | 4d | 2027-04-27 A | 2027-05-03 A | 3.3 | 100% | 2027-03-01 | 2027-03-04 | 0d |  | Beton C30/37 |
| 3.5 | Grondwerk kelder â Toren A |  | 3d | 2027-05-03 A | 2027-05-06 A | 3.4 | 100% | 2027-03-01 | 2027-03-03 | 0d |  |  |
| 3.6 | Vlechtwerk wapening keldervloer â Toren A |  | 8h | 2027-05-06 A | 2027-05-07 A | 3.5 | 100% | 2027-03-01 | 2027-05-07 | 1.75d | 0d |  |
| 3.7 | Stort keldervloer â Toren A |  | 6h | 2027-05-07 A | 2027-05-10 A | 3.6 | 100% | 2027-03-01 | 2027-05-07 | 1.5d | 0d | Beton C30/37 |
| 3.8 | Vlechtwerk wapening kelderwanden â Toren A |  | 8h | 2027-05-10 A | 2027-05-11 A | 3.7 | 100% | 2027-03-01 | 2027-05-10 | 1.5d | 0d |  |
| 3.9 | Stort kelderwanden â Toren A |  | 4h | 2027-05-11 A | 2027-05-12 A | 3.8 | 100% | 2027-03-01 | 2027-05-11 | 1d | 0d | Beton C30/37 |
| 3.10 | Grondwerk kelder â Toren B |  | 3d | 2027-05-03 A | 2027-05-06 A | 3.4 | 100% | 2027-03-01 | 2027-03-03 | 0d |  |  |
| 3.11 | Vlechtwerk wapening keldervloer â Toren B |  | 8h | 2027-05-06 A | 2027-05-07 A | 3.10 | 100% | 2027-03-01 | 2027-05-07 | 1.75d | 0d |  |
| 3.12 | Stort keldervloer â Toren B |  | 6h | 2027-05-07 A | 2027-05-10 A | 3.11 | 100% | 2027-03-01 | 2027-05-07 | 1.5d | 0d | Beton C30/37 |
| 3.13 | Vlechtwerk wapening kelderwanden â Toren B |  | 8h | 2027-05-10 A | 2027-05-11 A | 3.12 | 100% | 2027-03-01 | 2027-05-10 | 1.5d | 0d |  |
| 3.14 | Stort kelderwanden â Toren B |  | 4h | 2027-05-11 A | 2027-05-12 A | 3.13 | 100% | 2027-03-01 | 2027-05-11 | 1d | 0d | Beton C30/37 |
| 3.15 | Grondwerk kelder â Toren C |  | 3d | 2027-05-03 A | 2027-05-06 A | 3.4 | 100% | 2027-03-01 | 2027-03-03 | 0d |  |  |
| 3.16 | Vlechtwerk wapening keldervloer â Toren C |  | 8h | 2027-05-06 A | 2027-05-07 A | 3.15 | 100% | 2027-03-01 | 2027-05-07 | 1.75d | 0d |  |
| 3.17 | Stort keldervloer â Toren C |  | 6h | 2027-05-07 A | 2027-05-10 A | 3.16 | 100% | 2027-03-01 | 2027-05-07 | 1.5d | 0d | Beton C30/37 |
| 3.18 | Vlechtwerk wapening kelderwanden â Toren C |  | 8h | 2027-05-10 A | 2027-05-11 A | 3.17 | 100% | 2027-03-01 | 2027-05-10 | 1.5d | 0d |  |
| 3.19 | Stort kelderwanden â Toren C |  | 4h | 2027-05-11 A | 2027-05-12 A | 3.18 | 100% | 2027-03-01 | 2027-05-11 | 1d | 0d | Beton C30/37 |
| 3.20 | Afdichting kelder |  | 3d | 2027-05-12 A | 2027-05-17 A | 3.9, 3.14, 3.19 | 100% | 2027-03-01 | 2027-03-03 | 1d | 0d |  |
| 3.21 | Terugstorten grond rondom kelder |  | 3d | 2027-05-17 A | 2027-05-20 A | 3.20 | 100% | 2027-03-01 | 2027-03-03 | 1d | 0d |  |
| 3.22 | Parkeerdek storten (afdek begane grond) |  | 5d | 2027-05-20 A | 2027-05-27 A | 3.21 | 100% | 2027-03-01 | 2027-03-05 | 1d | 0d | Beton C30/37 |
| 3.23 | Damwanden verwijderen |  | 2d | 2027-05-27 A | 2027-05-31 A | 3.22 | 100% | 2027-03-01 | 2027-03-02 | 1d | 0d |  |
| 3.24 | Kelder waterdicht â keuring | milestone | 0d | 2027-05-31 A | 2027-05-31 A | 3.23 | 100% | 2027-03-01 | 2027-03-01 | 1d | 0d |  |
| 3.25 | Meerwerk: extra bergingen kelder |  | 6d | 2027-06-07 | 2027-06-14 | 3.24 |  | 2027-03-01 | 2027-03-08 | 194d | 63d |  |

Notes:
- 2.3: Hard-pin (P6 Mandatory Start): de vergunde stremmingsdatum ligt vast bij de gemeente en overschrijft de netwerklogica.
- 2.6: Vastgepind (prioriteit 1000): vaste aansluitdatum van het nutsbedrijf, mag niet schuiven.
- 3.25: Meerwerk-opdracht ná contractbaseline: extra bergingen in de kelder.

| ID | Activity | Type | Duration | Start | Finish | Predecessors | Complete | Planned start | Planned finish | Total float | Free float | Resources |
| --- | --- | --- | --- | --- | --- | --- | --- | --- | --- | --- | --- | --- |
| 4 | **3. Ruwbouw torens A/B/C (parallel)** |  | 5d | 2027-05-31 | 2027-10-04 |  |  | 2027-03-01 | 2027-03-05 | 0d |  |  |
| 4.1 | Torenkraan opbouwen |  | 3d | 2027-05-31 A | 2027-06-03 A | 3.24 | 100% | 2027-03-01 | 2027-03-03 | 1d |  |  |
| 4.2 | **Ruwbouw â Toren A** |  | 5d | 2027-06-07 | 2027-09-30 |  |  | 2027-03-01 | 2027-03-05 | 0d |  |  |
| 4.2.1 | Begane grondvloer storten â Toren A |  | 4d | 2027-06-07 | 2027-06-10 | 4.1, 3.9 |  | 2027-03-01 | 2027-03-04 | 0d |  | Beton C30/37 |
| 4.2.2 | Wanden verdieping 1 â Toren A |  | 4d | 2027-06-11 | 2027-06-16 | 4.2.1 |  | 2027-03-01 | 2027-03-04 | 0d |  | Betonvlechters; Torenkraan |
| 4.2.3 | Vloer verdieping 1 â Toren A |  | 3d | 2027-06-15 | 2027-06-17 | 4.2.2 SS+2d |  | 2027-03-01 | 2027-03-03 | 0d |  | Timmerlieden; Torenkraan |
| 4.2.4 | Wanden verdieping 2 â Toren A |  | 4d | 2027-06-18 | 2027-06-23 | 4.2.3 |  | 2027-03-01 | 2027-03-04 | 0d |  | Betonvlechters; Torenkraan |
| 4.2.5 | Vloer verdieping 2 â Toren A |  | 3d | 2027-06-22 | 2027-06-24 | 4.2.4 SS+2d |  | 2027-03-01 | 2027-03-03 | 0d |  | Timmerlieden; Torenkraan |
| 4.2.6 | Wanden verdieping 3 â Toren A |  | 4d | 2027-06-25 | 2027-06-30 | 4.2.5 |  | 2027-03-01 | 2027-03-04 | 0d |  | Betonvlechters; Torenkraan |
| 4.2.7 | Vloer verdieping 3 â Toren A |  | 3d | 2027-06-29 | 2027-07-01 | 4.2.6 SS+2d |  | 2027-03-01 | 2027-03-03 | 0d |  | Timmerlieden; Torenkraan |
| 4.2.8 | Wanden verdieping 4 â Toren A |  | 4d | 2027-07-02 | 2027-07-07 | 4.2.7 |  | 2027-03-01 | 2027-03-04 | 0d |  | Betonvlechters; Torenkraan |
| 4.2.9 | Vloer verdieping 4 â Toren A |  | 3d | 2027-07-06 | 2027-07-08 | 4.2.8 SS+2d |  | 2027-03-01 | 2027-03-03 | 0d |  | Timmerlieden; Torenkraan |
| 4.2.10 | Wanden verdieping 5 â Toren A |  | 4d | 2027-07-09 | 2027-07-14 | 4.2.9 |  | 2027-03-01 | 2027-03-04 | 0d |  | Betonvlechters; Torenkraan |
| 4.2.11 | Vloer verdieping 5 â Toren A |  | 3d | 2027-07-13 | 2027-07-15 | 4.2.10 SS+2d |  | 2027-03-01 | 2027-03-03 | 0d |  | Timmerlieden; Torenkraan |
| 4.2.12 | Wanden verdieping 6 â Toren A |  | 4d | 2027-07-16 | 2027-07-21 | 4.2.11 |  | 2027-03-01 | 2027-03-04 | 0d |  | Betonvlechters; Torenkraan |
| 4.2.13 | Vloer verdieping 6 â Toren A |  | 3d | 2027-07-20 | 2027-07-22 | 4.2.12 SS+2d |  | 2027-03-01 | 2027-03-03 | 0d |  | Timmerlieden; Torenkraan |
| 4.2.14 | Wanden verdieping 7 â Toren A |  | 4d | 2027-07-23 | 2027-08-18 | 4.2.13 |  | 2027-03-01 | 2027-03-04 | 0d |  | Betonvlechters; Torenkraan |
| 4.2.15 | Vloer verdieping 7 â Toren A |  | 3d | 2027-08-17 | 2027-08-19 | 4.2.14 SS+2d |  | 2027-03-01 | 2027-03-03 | 0d |  | Timmerlieden; Torenkraan |
| 4.2.16 | Wanden verdieping 8 â Toren A |  | 4d | 2027-08-20 | 2027-08-25 | 4.2.15 |  | 2027-03-01 | 2027-03-04 | 0d |  | Betonvlechters; Torenkraan |
| 4.2.17 | Vloer verdieping 8 â Toren A |  | 3d | 2027-08-24 | 2027-08-26 | 4.2.16 SS+2d |  | 2027-03-01 | 2027-03-03 | 0d |  | Timmerlieden; Torenkraan |
| 4.2.18 | Wanden verdieping 9 â Toren A |  | 4d | 2027-08-27 | 2027-09-01 | 4.2.17 |  | 2027-03-01 | 2027-03-04 | 0d |  | Betonvlechters; Torenkraan |
| 4.2.19 | Vloer verdieping 9 â Toren A |  | 3d | 2027-08-31 | 2027-09-02 | 4.2.18 SS+2d |  | 2027-03-01 | 2027-03-03 | 0d |  | Timmerlieden; Torenkraan |
| 4.2.20 | Wanden verdieping 10 â Toren A |  | 4d | 2027-09-03 | 2027-09-08 | 4.2.19 |  | 2027-03-01 | 2027-03-04 | 0d |  | Betonvlechters; Torenkraan |
| 4.2.21 | Vloer verdieping 10 â Toren A |  | 3d | 2027-09-07 | 2027-09-09 | 4.2.20 SS+2d |  | 2027-03-01 | 2027-03-03 | 0d |  | Timmerlieden; Torenkraan |
| 4.2.22 | Wanden verdieping 11 â Toren A |  | 4d | 2027-09-10 | 2027-09-15 | 4.2.21 |  | 2027-03-01 | 2027-03-04 | 0d |  | Betonvlechters; Torenkraan |
| 4.2.23 | Vloer verdieping 11 â Toren A |  | 3d | 2027-09-14 | 2027-09-16 | 4.2.22 SS+2d |  | 2027-03-01 | 2027-03-03 | 0d |  | Timmerlieden; Torenkraan |
| 4.2.24 | Wanden verdieping 12 â Toren A |  | 4d | 2027-09-17 | 2027-09-22 | 4.2.23 |  | 2027-03-01 | 2027-03-04 | 0d |  | Betonvlechters; Torenkraan |
| 4.2.25 | Vloer verdieping 12 â Toren A |  | 3d | 2027-09-21 | 2027-09-23 | 4.2.24 SS+2d |  | 2027-03-01 | 2027-03-03 | 0d |  | Timmerlieden; Torenkraan |
| 4.2.26 | Trappenhuis & liftschacht â Toren A |  | 36d | 2027-06-07 | 2027-08-16 | 4.2.1 SS |  | 2027-03-01 | 2027-04-19 | 164d | 33d | Timmerlieden |
| 4.2.27 | Dakconstructie plaatsen â Toren A |  | 5d | 2027-09-24 | 2027-09-30 | 4.2.25 |  | 2027-03-01 | 2027-03-05 | 0d |  | Timmerlieden; Torenkraan |
| 4.2.28 | Ruwbouw gereed â Toren A | milestone | 0d | 2027-09-30 | 2027-09-30 | 4.2.26, 4.2.27 |  | 2027-03-01 | 2027-03-01 | 131d | 0d |  |
| 4.2.29 | Ruwbouw toren A (LOE) |  | 69d | 2027-06-07 | 2027-09-30 | 4.2.1 SS, 4.2.27 FF |  | 2027-03-01 | 2027-03-05 | 0d |  |  |

| ID | Activity | Type | Duration | Start | Finish | Predecessors | Planned start | Planned finish | Total float | Free float | Resources |
| --- | --- | --- | --- | --- | --- | --- | --- | --- | --- | --- | --- |
| 4.3 | **Ruwbouw â Toren B** |  | 5d | 2027-06-07 | 2027-09-30 |  | 2027-03-01 | 2027-03-05 | 0d |  |  |
| 4.3.1 | Begane grondvloer storten â Toren B |  | 4d | 2027-06-07 | 2027-06-10 | 4.1, 3.14 | 2027-03-01 | 2027-03-04 | 0d |  | Beton C30/37 |
| 4.3.2 | Wanden verdieping 1 â Toren B |  | 4d | 2027-06-11 | 2027-06-16 | 4.3.1 | 2027-03-01 | 2027-03-04 | 0d |  | Betonvlechters; Torenkraan |
| 4.3.3 | Vloer verdieping 1 â Toren B |  | 3d | 2027-06-15 | 2027-06-17 | 4.3.2 SS+2d | 2027-03-01 | 2027-03-03 | 0d |  | Timmerlieden; Torenkraan |
| 4.3.4 | Wanden verdieping 2 â Toren B |  | 4d | 2027-06-18 | 2027-06-23 | 4.3.3 | 2027-03-01 | 2027-03-04 | 0d |  | Betonvlechters; Torenkraan |
| 4.3.5 | Vloer verdieping 2 â Toren B |  | 3d | 2027-06-22 | 2027-06-24 | 4.3.4 SS+2d | 2027-03-01 | 2027-03-03 | 0d |  | Timmerlieden; Torenkraan |
| 4.3.6 | Wanden verdieping 3 â Toren B |  | 4d | 2027-06-25 | 2027-06-30 | 4.3.5 | 2027-03-01 | 2027-03-04 | 0d |  | Betonvlechters; Torenkraan |
| 4.3.7 | Vloer verdieping 3 â Toren B |  | 3d | 2027-06-29 | 2027-07-01 | 4.3.6 SS+2d | 2027-03-01 | 2027-03-03 | 0d |  | Timmerlieden; Torenkraan |
| 4.3.8 | Wanden verdieping 4 â Toren B |  | 4d | 2027-07-02 | 2027-07-07 | 4.3.7 | 2027-03-01 | 2027-03-04 | 0d |  | Betonvlechters; Torenkraan |
| 4.3.9 | Vloer verdieping 4 â Toren B |  | 3d | 2027-07-06 | 2027-07-08 | 4.3.8 SS+2d | 2027-03-01 | 2027-03-03 | 0d |  | Timmerlieden; Torenkraan |
| 4.3.10 | Wanden verdieping 5 â Toren B |  | 4d | 2027-07-09 | 2027-07-14 | 4.3.9 | 2027-03-01 | 2027-03-04 | 0d |  | Betonvlechters; Torenkraan |
| 4.3.11 | Vloer verdieping 5 â Toren B |  | 3d | 2027-07-13 | 2027-07-15 | 4.3.10 SS+2d | 2027-03-01 | 2027-03-03 | 0d |  | Timmerlieden; Torenkraan |
| 4.3.12 | Wanden verdieping 6 â Toren B |  | 4d | 2027-07-16 | 2027-07-21 | 4.3.11 | 2027-03-01 | 2027-03-04 | 0d |  | Betonvlechters; Torenkraan |
| 4.3.13 | Vloer verdieping 6 â Toren B |  | 3d | 2027-07-20 | 2027-07-22 | 4.3.12 SS+2d | 2027-03-01 | 2027-03-03 | 0d |  | Timmerlieden; Torenkraan |
| 4.3.14 | Wanden verdieping 7 â Toren B |  | 4d | 2027-07-23 | 2027-08-18 | 4.3.13 | 2027-03-01 | 2027-03-04 | 0d |  | Betonvlechters; Torenkraan |
| 4.3.15 | Vloer verdieping 7 â Toren B |  | 3d | 2027-08-17 | 2027-08-19 | 4.3.14 SS+2d | 2027-03-01 | 2027-03-03 | 0d |  | Timmerlieden; Torenkraan |
| 4.3.16 | Wanden verdieping 8 â Toren B |  | 4d | 2027-08-20 | 2027-08-25 | 4.3.15 | 2027-03-01 | 2027-03-04 | 0d |  | Betonvlechters; Torenkraan |
| 4.3.17 | Vloer verdieping 8 â Toren B |  | 3d | 2027-08-24 | 2027-08-26 | 4.3.16 SS+2d | 2027-03-01 | 2027-03-03 | 0d |  | Timmerlieden; Torenkraan |
| 4.3.18 | Wanden verdieping 9 â Toren B |  | 4d | 2027-08-27 | 2027-09-01 | 4.3.17 | 2027-03-01 | 2027-03-04 | 0d |  | Betonvlechters; Torenkraan |
| 4.3.19 | Vloer verdieping 9 â Toren B |  | 3d | 2027-08-31 | 2027-09-02 | 4.3.18 SS+2d | 2027-03-01 | 2027-03-03 | 0d |  | Timmerlieden; Torenkraan |
| 4.3.20 | Wanden verdieping 10 â Toren B |  | 4d | 2027-09-03 | 2027-09-08 | 4.3.19 | 2027-03-01 | 2027-03-04 | 0d |  | Betonvlechters; Torenkraan |
| 4.3.21 | Vloer verdieping 10 â Toren B |  | 3d | 2027-09-07 | 2027-09-09 | 4.3.20 SS+2d | 2027-03-01 | 2027-03-03 | 0d |  | Timmerlieden; Torenkraan |
| 4.3.22 | Wanden verdieping 11 â Toren B |  | 4d | 2027-09-10 | 2027-09-15 | 4.3.21 | 2027-03-01 | 2027-03-04 | 0d |  | Betonvlechters; Torenkraan |
| 4.3.23 | Vloer verdieping 11 â Toren B |  | 3d | 2027-09-14 | 2027-09-16 | 4.3.22 SS+2d | 2027-03-01 | 2027-03-03 | 0d |  | Timmerlieden; Torenkraan |
| 4.3.24 | Wanden verdieping 12 â Toren B |  | 4d | 2027-09-17 | 2027-09-22 | 4.3.23 | 2027-03-01 | 2027-03-04 | 0d |  | Betonvlechters; Torenkraan |
| 4.3.25 | Vloer verdieping 12 â Toren B |  | 3d | 2027-09-21 | 2027-09-23 | 4.3.24 SS+2d | 2027-03-01 | 2027-03-03 | 0d |  | Timmerlieden; Torenkraan |
| 4.3.26 | Trappenhuis & liftschacht â Toren B |  | 36d | 2027-06-07 | 2027-08-16 | 4.3.1 SS | 2027-03-01 | 2027-04-19 | 164d | 33d | Timmerlieden |
| 4.3.27 | Dakconstructie plaatsen â Toren B |  | 5d | 2027-09-24 | 2027-09-30 | 4.3.25 | 2027-03-01 | 2027-03-05 | 0d |  | Timmerlieden; Torenkraan |
| 4.3.28 | Ruwbouw gereed â Toren B | milestone | 0d | 2027-09-30 | 2027-09-30 | 4.3.26, 4.3.27 | 2027-03-01 | 2027-03-01 | 131d | 0d |  |

| ID | Activity | Type | Duration | Start | Finish | Predecessors | Planned start | Planned finish | Total float | Free float | Resources |
| --- | --- | --- | --- | --- | --- | --- | --- | --- | --- | --- | --- |
| 4.4 | **Ruwbouw â Toren C** |  | 5d | 2027-06-07 | 2027-09-30 |  | 2027-03-01 | 2027-03-05 | 3d | 0d |  |
| 4.4.1 | Begane grondvloer storten â Toren C |  | 4d | 2027-06-07 | 2027-06-10 | 4.1, 3.19 | 2027-03-01 | 2027-03-04 | 3d | 0d | Beton C30/37 |
| 4.4.2 | Wanden verdieping 1 â Toren C |  | 4d | 2027-06-11 | 2027-06-16 | 4.4.1 | 2027-03-01 | 2027-03-04 | 3d | 0d | Betonvlechters; Torenkraan |
| 4.4.3 | Vloer verdieping 1 â Toren C |  | 3d | 2027-06-15 | 2027-06-17 | 4.4.2 SS+2d | 2027-03-01 | 2027-03-03 | 3d | 0d | Timmerlieden; Torenkraan |
| 4.4.4 | Wanden verdieping 2 â Toren C |  | 4d | 2027-06-18 | 2027-06-23 | 4.4.3 | 2027-03-01 | 2027-03-04 | 3d | 0d | Betonvlechters; Torenkraan |
| 4.4.5 | Vloer verdieping 2 â Toren C |  | 3d | 2027-06-22 | 2027-06-24 | 4.4.4 SS+2d | 2027-03-01 | 2027-03-03 | 3d | 0d | Timmerlieden; Torenkraan |
| 4.4.6 | Wanden verdieping 3 â Toren C |  | 4d | 2027-06-25 | 2027-06-30 | 4.4.5 | 2027-03-01 | 2027-03-04 | 3d | 0d | Betonvlechters; Torenkraan |
| 4.4.7 | Vloer verdieping 3 â Toren C |  | 3d | 2027-06-29 | 2027-07-01 | 4.4.6 SS+2d | 2027-03-01 | 2027-03-03 | 3d | 0d | Timmerlieden; Torenkraan |
| 4.4.8 | Wanden verdieping 4 â Toren C |  | 4d | 2027-07-02 | 2027-07-07 | 4.4.7 | 2027-03-01 | 2027-03-04 | 3d | 0d | Betonvlechters; Torenkraan |
| 4.4.9 | Vloer verdieping 4 â Toren C |  | 3d | 2027-07-06 | 2027-07-08 | 4.4.8 SS+2d | 2027-03-01 | 2027-03-03 | 3d | 0d | Timmerlieden; Torenkraan |
| 4.4.10 | Wanden verdieping 5 â Toren C |  | 4d | 2027-07-09 | 2027-07-14 | 4.4.9 | 2027-03-01 | 2027-03-04 | 3d | 0d | Betonvlechters; Torenkraan |
| 4.4.11 | Vloer verdieping 5 â Toren C |  | 3d | 2027-07-13 | 2027-07-15 | 4.4.10 SS+2d | 2027-03-01 | 2027-03-03 | 3d | 0d | Timmerlieden; Torenkraan |
| 4.4.12 | Wanden verdieping 6 â Toren C |  | 4d | 2027-07-16 | 2027-07-21 | 4.4.11 | 2027-03-01 | 2027-03-04 | 3d | 0d | Betonvlechters; Torenkraan |
| 4.4.13 | Vloer verdieping 6 â Toren C |  | 3d | 2027-07-20 | 2027-07-22 | 4.4.12 SS+2d | 2027-03-01 | 2027-03-03 | 3d | 0d | Timmerlieden; Torenkraan |
| 4.4.14 | Wanden verdieping 7 â Toren C |  | 4d | 2027-07-23 | 2027-08-18 | 4.4.13 | 2027-03-01 | 2027-03-04 | 3d | 0d | Betonvlechters; Torenkraan |
| 4.4.15 | Vloer verdieping 7 â Toren C |  | 3d | 2027-08-17 | 2027-08-19 | 4.4.14 SS+2d | 2027-03-01 | 2027-03-03 | 3d | 0d | Timmerlieden; Torenkraan |
| 4.4.16 | Wanden verdieping 8 â Toren C |  | 4d | 2027-08-20 | 2027-08-25 | 4.4.15 | 2027-03-01 | 2027-03-04 | 3d | 0d | Betonvlechters; Torenkraan |
| 4.4.17 | Vloer verdieping 8 â Toren C |  | 3d | 2027-08-24 | 2027-08-26 | 4.4.16 SS+2d | 2027-03-01 | 2027-03-03 | 3d | 0d | Timmerlieden; Torenkraan |
| 4.4.18 | Wanden verdieping 9 â Toren C |  | 4d | 2027-08-27 | 2027-09-01 | 4.4.17 | 2027-03-01 | 2027-03-04 | 3d | 0d | Betonvlechters; Torenkraan |
| 4.4.19 | Vloer verdieping 9 â Toren C |  | 3d | 2027-08-31 | 2027-09-02 | 4.4.18 SS+2d | 2027-03-01 | 2027-03-03 | 3d | 0d | Timmerlieden; Torenkraan |
| 4.4.20 | Wanden verdieping 10 â Toren C |  | 4d | 2027-09-03 | 2027-09-08 | 4.4.19 | 2027-03-01 | 2027-03-04 | 3d | 0d | Betonvlechters; Torenkraan |
| 4.4.21 | Vloer verdieping 10 â Toren C |  | 3d | 2027-09-07 | 2027-09-09 | 4.4.20 SS+2d | 2027-03-01 | 2027-03-03 | 3d | 0d | Timmerlieden; Torenkraan |
| 4.4.22 | Wanden verdieping 11 â Toren C |  | 4d | 2027-09-10 | 2027-09-15 | 4.4.21 | 2027-03-01 | 2027-03-04 | 3d | 0d | Betonvlechters; Torenkraan |
| 4.4.23 | Vloer verdieping 11 â Toren C |  | 3d | 2027-09-14 | 2027-09-16 | 4.4.22 SS+2d | 2027-03-01 | 2027-03-03 | 3d | 0d | Timmerlieden; Torenkraan |
| 4.4.24 | Wanden verdieping 12 â Toren C |  | 4d | 2027-09-17 | 2027-09-22 | 4.4.23 | 2027-03-01 | 2027-03-04 | 3d | 0d | Betonvlechters; Torenkraan |
| 4.4.25 | Vloer verdieping 12 â Toren C |  | 3d | 2027-09-21 | 2027-09-23 | 4.4.24 SS+2d | 2027-03-01 | 2027-03-03 | 3d | 0d | Timmerlieden; Torenkraan |
| 4.4.26 | Trappenhuis & liftschacht â Toren C |  | 36d | 2027-06-07 | 2027-08-16 | 4.4.1 SS | 2027-03-01 | 2027-04-19 | 164d | 33d | Timmerlieden |
| 4.4.27 | Dakconstructie plaatsen â Toren C |  | 5d | 2027-09-24 | 2027-09-30 | 4.4.25 | 2027-03-01 | 2027-03-05 | 3d | 0d | Timmerlieden; Torenkraan |
| 4.4.28 | Ruwbouw gereed â Toren C | milestone | 0d | 2027-09-30 | 2027-09-30 | 4.4.26, 4.4.27 | 2027-03-01 | 2027-03-01 | 131d | 0d |  |
| 4.5 | Torenkraan afbreken |  | 2d | 2027-10-01 | 2027-10-04 | 4.2.28, 4.3.28, 4.4.28, 3.25 | 2027-03-01 | 2027-03-02 | 131d |  |  |

| ID | Activity | Duration | Start | Finish | Predecessors | Planned start | Planned finish | Total float | Free float | Resources |
| --- | --- | --- | --- | --- | --- | --- | --- | --- | --- | --- |
| 5 | **4. Gevel & dak** | 5d | 2027-06-07 | 2027-11-23 |  | 2027-03-01 | 2027-03-05 | 0d |  |  |
| 5.1 | **Gevel & dak â Toren A** | 5d | 2027-10-01 | 2027-11-17 |  | 2027-03-01 | 2027-03-05 | 0d |  |  |
| 5.1.1 | Steigerwerk plaatsen â Toren A | 3d | 2027-10-01 | 2027-10-05 | 4.2.27 | 2027-03-01 | 2027-03-03 | 0d |  |  |
| 5.1.2 | Gevelisolatie aanbrengen â Toren A | 8d | 2027-10-06 | 2027-10-15 | 5.1.1 | 2027-03-01 | 2027-03-10 | 0d |  | Gevelbouwer |
| 5.1.3 | Gevelbekleding monteren â Toren A | 10d | 2027-10-18 | 2027-10-29 | 5.1.2 | 2027-03-01 | 2027-03-12 | 0d |  | Gevelbouwer |
| 5.1.4 | Kozijnen plaatsen â Toren A | 6d | 2027-11-01 | 2027-11-08 | 5.1.3 | 2027-03-01 | 2027-03-08 | 0d |  |  |
| 5.1.5 | Dakisolatie aanbrengen â Toren A | 5d | 2027-10-01 | 2027-10-07 | 4.2.27 | 2027-03-01 | 2027-03-05 | 19d | 0d |  |
| 5.1.6 | Dakbedekking aanbrengen â Toren A | 5d | 2027-10-08 | 2027-10-14 | 5.1.5 | 2027-03-01 | 2027-03-05 | 19d | 0d |  |
| 5.1.7 | Balkonhekwerken monteren â Toren A | 5d | 2027-11-09 | 2027-11-15 | 5.1.4 | 2027-03-01 | 2027-03-05 | 0d |  |  |
| 5.1.8 | Regenwaterafvoer aansluiten â Toren A | 3d | 2027-10-15 | 2027-10-19 | 5.1.6 | 2027-03-01 | 2027-03-03 | 19d |  |  |
| 5.1.9 | Steigerwerk verwijderen â Toren A | 2d | 2027-11-16 | 2027-11-17 | 5.1.7, 5.1.8 | 2027-03-01 | 2027-03-02 | 0d |  |  |
| 5.2 | **Gevel & dak â Toren B** | 5d | 2027-10-01 | 2027-11-17 |  | 2027-03-01 | 2027-03-05 | 0d |  |  |
| 5.2.1 | Steigerwerk plaatsen â Toren B | 3d | 2027-10-01 | 2027-10-05 | 4.3.27 | 2027-03-01 | 2027-03-03 | 0d |  |  |
| 5.2.2 | Gevelisolatie aanbrengen â Toren B | 8d | 2027-10-06 | 2027-10-15 | 5.2.1 | 2027-03-01 | 2027-03-10 | 0d |  | Gevelbouwer |
| 5.2.3 | Gevelbekleding monteren â Toren B | 10d | 2027-10-18 | 2027-10-29 | 5.2.2 | 2027-03-01 | 2027-03-12 | 0d |  | Gevelbouwer |
| 5.2.4 | Kozijnen plaatsen â Toren B | 6d | 2027-11-01 | 2027-11-08 | 5.2.3 | 2027-03-01 | 2027-03-08 | 0d |  |  |
| 5.2.5 | Dakisolatie aanbrengen â Toren B | 5d | 2027-10-01 | 2027-10-07 | 4.3.27 | 2027-03-01 | 2027-03-05 | 19d | 0d |  |
| 5.2.6 | Dakbedekking aanbrengen â Toren B | 5d | 2027-10-08 | 2027-10-14 | 5.2.5 | 2027-03-01 | 2027-03-05 | 19d | 0d |  |
| 5.2.7 | Balkonhekwerken monteren â Toren B | 5d | 2027-11-09 | 2027-11-15 | 5.2.4 | 2027-03-01 | 2027-03-05 | 0d |  |  |
| 5.2.8 | Regenwaterafvoer aansluiten â Toren B | 3d | 2027-10-15 | 2027-10-19 | 5.2.6 | 2027-03-01 | 2027-03-03 | 19d |  |  |
| 5.2.9 | Steigerwerk verwijderen â Toren B | 2d | 2027-11-16 | 2027-11-17 | 5.2.7, 5.2.8 | 2027-03-01 | 2027-03-02 | 0d |  |  |
| 5.3 | **Gevel & dak â Toren C** | 5d | 2027-10-01 | 2027-11-17 |  | 2027-03-01 | 2027-03-05 | 3d | 0d |  |
| 5.3.1 | Steigerwerk plaatsen â Toren C | 3d | 2027-10-01 | 2027-10-05 | 4.4.27 | 2027-03-01 | 2027-03-03 | 3d | 0d |  |
| 5.3.2 | Gevelisolatie aanbrengen â Toren C | 8d | 2027-10-06 | 2027-10-15 | 5.3.1 | 2027-03-01 | 2027-03-10 | 3d | 0d | Gevelbouwer |
| 5.3.3 | Gevelbekleding monteren â Toren C | 10d | 2027-10-18 | 2027-10-29 | 5.3.2 | 2027-03-01 | 2027-03-12 | 3d | 0d | Gevelbouwer |
| 5.3.4 | Kozijnen plaatsen â Toren C | 6d | 2027-11-01 | 2027-11-08 | 5.3.3 | 2027-03-01 | 2027-03-08 | 3d | 0d |  |
| 5.3.5 | Dakisolatie aanbrengen â Toren C | 5d | 2027-10-01 | 2027-10-07 | 4.4.27 | 2027-03-01 | 2027-03-05 | 22d | 0d |  |
| 5.3.6 | Dakbedekking aanbrengen â Toren C | 5d | 2027-10-08 | 2027-10-14 | 5.3.5 | 2027-03-01 | 2027-03-05 | 22d | 0d |  |
| 5.3.7 | Balkonhekwerken monteren â Toren C | 5d | 2027-11-09 | 2027-11-15 | 5.3.4 | 2027-03-01 | 2027-03-05 | 3d | 0d |  |
| 5.3.8 | Regenwaterafvoer aansluiten â Toren C | 3d | 2027-10-15 | 2027-10-19 | 5.3.6 | 2027-03-01 | 2027-03-03 | 22d | 19d |  |
| 5.3.9 | Steigerwerk verwijderen â Toren C | 2d | 2027-11-16 | 2027-11-17 | 5.3.7, 5.3.8 | 2027-03-01 | 2027-03-02 | 3d | 0d |  |
| 5.4 | Gevelbeplating hoofdentree | 4d | 2027-11-18 | 2027-11-23 | 5.1.9 | 2027-03-01 | 2027-03-04 | 71d | 0d |  |
| 5.5 | Overkapping parkeerdek plaatsen | 5d | 2027-06-07 | 2027-06-11 | 3.22 | 2027-03-01 | 2027-03-05 | 163d | 0d |  |

| ID | Activity | Type | Duration | Start | Finish | Predecessors | Planned start | Planned finish | Total float | Free float | Resources |
| --- | --- | --- | --- | --- | --- | --- | --- | --- | --- | --- | --- |
| 6 | **5. Installaties (MEP)** |  | 5d | 2027-11-18 | 2028-01-07 |  | 2027-03-01 | 2027-03-05 | 0d |  |  |
| 6.1 | Warmtecentrale plaatsen |  | 6d | 2027-11-24 | 2027-12-01 | 5.4 | 2027-03-01 | 2027-03-08 | 78d | 0d |  |
| 6.2 | Hoofdverdeler elektra aansluiten |  | 4d | 2027-12-02 | 2027-12-07 | 6.1 | 2027-03-01 | 2027-03-04 | 78d | 0d |  |
| 6.3 | Noodstroomaggregaat plaatsen & testen |  | 3d | 2027-12-08 | 2027-12-10 | 6.2 | 2027-03-01 | 2027-03-03 | 78d | 0d |  |
| 6.4 | Datacentrum serverruimte inrichten |  | 4d | 2027-12-13 | 2027-12-16 | 6.3 | 2027-03-01 | 2027-03-04 | 78d |  |  |
| 6.5 | **Installaties â Toren A** |  | 5d | 2027-11-18 | 2028-01-07 |  | 2027-03-01 | 2027-03-05 | 0d |  |  |
| 6.5.1 | Werktuigbouwkundige installatie â Toren A |  | 8d | 2027-11-18 | 2027-11-29 | 5.1.9 | 2027-03-01 | 2027-03-10 | 0d |  | Installateurs |
| 6.5.2 | Elektra aanleggen â Toren A |  | 7d | 2027-11-22 | 2027-11-30 | 6.5.1 SS+2d | 2027-03-01 | 2027-03-09 | 0d |  | Installateurs |
| 6.5.3 | Ventilatiekanalen aansluiten â Toren A |  | 5d | 2027-12-01 | 2027-12-07 | 6.5.2 | 2027-03-01 | 2027-03-05 | 0d |  |  |
| 6.5.4 | Sprinklerinstallatie aanleggen â Toren A |  | 5d | 2027-12-08 | 2027-12-14 | 6.5.3 | 2027-03-01 | 2027-03-05 | 0d |  |  |
| 6.5.5 | Data/ICT-bekabeling aanleggen â Toren A |  | 4d | 2027-12-15 | 2027-12-20 | 6.5.4 | 2027-03-01 | 2027-03-04 | 0d |  |  |
| 6.5.6 | Brandmeldinstallatie aanleggen â Toren A |  | 4d | 2027-12-21 | 2027-12-24 | 6.5.5 | 2027-03-01 | 2027-03-04 | 0d |  |  |
| 6.5.7 | Levering & installatie liftinstallatie â Toren A |  | 10d | 2027-12-27 | 2028-01-07 | 6.5.6 | 2027-03-01 | 2027-03-12 | 0d |  | Liftleverancier |
| 6.5.8 | Oplevermeting installaties â Toren A | milestone | 0d | 2028-01-07 | 2028-01-07 | 6.5.7 | 2027-03-01 | 2027-03-01 | 0d |  |  |
| 6.6 | **Installaties â Toren B** |  | 5d | 2027-11-18 | 2028-01-07 |  | 2027-03-01 | 2027-03-05 | 0d |  |  |
| 6.6.1 | Werktuigbouwkundige installatie â Toren B |  | 8d | 2027-11-18 | 2027-11-29 | 5.2.9 | 2027-03-01 | 2027-03-10 | 0d |  | Installateurs |
| 6.6.2 | Elektra aanleggen â Toren B |  | 7d | 2027-11-22 | 2027-11-30 | 6.6.1 SS+2d | 2027-03-01 | 2027-03-09 | 0d |  | Installateurs |
| 6.6.3 | Ventilatiekanalen aansluiten â Toren B |  | 5d | 2027-12-01 | 2027-12-07 | 6.6.2 | 2027-03-01 | 2027-03-05 | 0d |  |  |
| 6.6.4 | Sprinklerinstallatie aanleggen â Toren B |  | 5d | 2027-12-08 | 2027-12-14 | 6.6.3 | 2027-03-01 | 2027-03-05 | 0d |  |  |
| 6.6.5 | Data/ICT-bekabeling aanleggen â Toren B |  | 4d | 2027-12-15 | 2027-12-20 | 6.6.4 | 2027-03-01 | 2027-03-04 | 0d |  |  |
| 6.6.6 | Brandmeldinstallatie aanleggen â Toren B |  | 4d | 2027-12-21 | 2027-12-24 | 6.6.5 | 2027-03-01 | 2027-03-04 | 0d |  |  |
| 6.6.7 | Levering & installatie liftinstallatie â Toren B |  | 10d | 2027-12-27 | 2028-01-07 | 6.6.6 | 2027-03-01 | 2027-03-12 | 0d |  | Liftleverancier |
| 6.6.8 | Oplevermeting installaties â Toren B | milestone | 0d | 2028-01-07 | 2028-01-07 | 6.6.7 | 2027-03-01 | 2027-03-01 | 0d |  |  |
| 6.7 | **Installaties â Toren C** |  | 5d | 2027-11-18 | 2028-01-07 |  | 2027-03-01 | 2027-03-05 | 3d | 0d |  |
| 6.7.1 | Werktuigbouwkundige installatie â Toren C |  | 8d | 2027-11-18 | 2027-11-29 | 5.3.9 | 2027-03-01 | 2027-03-10 | 3d | 0d | Installateurs |
| 6.7.2 | Elektra aanleggen â Toren C |  | 7d | 2027-11-22 | 2027-11-30 | 6.7.1 SS+2d | 2027-03-01 | 2027-03-09 | 3d | 0d | Installateurs |
| 6.7.3 | Ventilatiekanalen aansluiten â Toren C |  | 5d | 2027-12-01 | 2027-12-07 | 6.7.2 | 2027-03-01 | 2027-03-05 | 3d | 0d |  |
| 6.7.4 | Sprinklerinstallatie aanleggen â Toren C |  | 5d | 2027-12-08 | 2027-12-14 | 6.7.3 | 2027-03-01 | 2027-03-05 | 3d | 0d |  |
| 6.7.5 | Data/ICT-bekabeling aanleggen â Toren C |  | 4d | 2027-12-15 | 2027-12-20 | 6.7.4 | 2027-03-01 | 2027-03-04 | 3d | 0d |  |
| 6.7.6 | Brandmeldinstallatie aanleggen â Toren C |  | 4d | 2027-12-21 | 2027-12-24 | 6.7.5 | 2027-03-01 | 2027-03-04 | 3d | 0d |  |
| 6.7.7 | Levering & installatie liftinstallatie â Toren C |  | 10d | 2027-12-27 | 2028-01-07 | 6.7.6 | 2027-03-01 | 2027-03-12 | 3d | 0d | Liftleverancier |
| 6.7.8 | Oplevermeting installaties â Toren C | milestone | 0d | 2028-01-07 | 2028-01-07 | 6.7.7 | 2027-03-01 | 2027-03-01 | 3d | 0d |  |

| ID | Activity | Duration | Start | Finish | Predecessors | Planned start | Planned finish | Total float | Free float | Resources |
| --- | --- | --- | --- | --- | --- | --- | --- | --- | --- | --- |
| 7 | **6. Afbouw** | 5d | 2027-11-24 | 2028-04-04 |  | 2027-03-01 | 2027-03-05 | 0d |  |  |
| 7.1 | **Afbouw â Toren A** | 5d | 2028-01-10 | 2028-04-04 |  | 2027-03-01 | 2027-03-05 | 0d |  |  |
| 7.1.1 | Stucwerk â Toren A | 15d | 2028-01-10 | 2028-01-28 | 6.5.8 | 2027-03-01 | 2027-03-16 | 0d |  | Stukadoors |
| 7.1.2 | Tegelwerk â Toren A | 10d | 2028-01-31 | 2028-02-11 | 7.1.1 | 2027-03-01 | 2027-03-12 | 0d |  | Tegelzetters |
| 7.1.3 | Keukens plaatsen â Toren A | 8d | 2028-02-14 | 2028-02-23 | 7.1.2 | 2027-03-01 | 2027-03-10 | 0d |  | Keukenmonteurs |
| 7.1.4 | Sanitair plaatsen â Toren A | 7d | 2028-02-24 | 2028-03-03 | 7.1.3 | 2027-03-01 | 2027-03-09 | 0d |  | Installateurs |
| 7.1.5 | Schilderwerk â Toren A | 8d | 2028-03-06 | 2028-03-15 | 7.1.4 | 2027-03-01 | 2027-03-10 | 0d |  | Schilders |
| 7.1.6 | Vloerafwerking â Toren A | 5d | 2028-03-16 | 2028-03-22 | 7.1.5 | 2027-03-01 | 2027-03-05 | 0d |  | Tegelzetters |
| 7.1.7 | Plafonds afwerken â Toren A | 5d | 2028-03-23 | 2028-03-29 | 7.1.6 | 2027-03-01 | 2027-03-05 | 0d |  |  |
| 7.1.8 | Deuren hang- en sluitwerk â Toren A | 4d | 2028-03-30 | 2028-04-04 | 7.1.7 | 2027-03-01 | 2027-03-04 | 0d |  |  |
| 7.2 | **Afbouw â Toren B** | 5d | 2028-01-10 | 2028-04-04 |  | 2027-03-01 | 2027-03-05 | 0d |  |  |
| 7.2.1 | Stucwerk â Toren B | 15d | 2028-01-10 | 2028-01-28 | 6.6.8 | 2027-03-01 | 2027-03-16 | 0d |  | Stukadoors |
| 7.2.2 | Tegelwerk â Toren B | 10d | 2028-01-31 | 2028-02-11 | 7.2.1 | 2027-03-01 | 2027-03-12 | 0d |  | Tegelzetters |
| 7.2.3 | Keukens plaatsen â Toren B | 8d | 2028-02-14 | 2028-02-23 | 7.2.2 | 2027-03-01 | 2027-03-10 | 0d |  | Keukenmonteurs |
| 7.2.4 | Sanitair plaatsen â Toren B | 7d | 2028-02-24 | 2028-03-03 | 7.2.3 | 2027-03-01 | 2027-03-09 | 0d |  | Installateurs |
| 7.2.5 | Schilderwerk â Toren B | 8d | 2028-03-06 | 2028-03-15 | 7.2.4 | 2027-03-01 | 2027-03-10 | 0d |  | Schilders |
| 7.2.6 | Vloerafwerking â Toren B | 5d | 2028-03-16 | 2028-03-22 | 7.2.5 | 2027-03-01 | 2027-03-05 | 0d |  | Tegelzetters |
| 7.2.7 | Plafonds afwerken â Toren B | 5d | 2028-03-23 | 2028-03-29 | 7.2.6 | 2027-03-01 | 2027-03-05 | 0d |  |  |
| 7.2.8 | Deuren hang- en sluitwerk â Toren B | 4d | 2028-03-30 | 2028-04-04 | 7.2.7 | 2027-03-01 | 2027-03-04 | 0d |  |  |
| 7.3 | **Afbouw â Toren C** | 5d | 2028-01-10 | 2028-03-30 |  | 2027-03-01 | 2027-03-05 | 3d | 0d |  |
| 7.3.1 | Stucwerk â Toren C | 12d | 2028-01-10 | 2028-01-25 | 6.7.8 | 2027-03-01 | 2027-03-16 | 3d | 0d | Stukadoors |
| 7.3.2 | Tegelwerk â Toren C | 10d | 2028-01-26 | 2028-02-08 | 7.3.1 | 2027-03-01 | 2027-03-12 | 3d | 0d | Tegelzetters |
| 7.3.3 | Keukens plaatsen â Toren C | 8d | 2028-02-09 | 2028-02-18 | 7.3.2 | 2027-03-01 | 2027-03-10 | 3d | 0d | Keukenmonteurs |
| 7.3.4 | Sanitair plaatsen â Toren C | 7d | 2028-02-21 | 2028-02-29 | 7.3.3 | 2027-03-01 | 2027-03-09 | 3d | 0d | Installateurs |
| 7.3.5 | Schilderwerk â Toren C | 8d | 2028-03-01 | 2028-03-10 | 7.3.4 | 2027-03-01 | 2027-03-10 | 3d | 0d | Schilders |
| 7.3.6 | Vloerafwerking â Toren C | 5d | 2028-03-13 | 2028-03-17 | 7.3.5 | 2027-03-01 | 2027-03-05 | 3d | 0d | Tegelzetters |
| 7.3.7 | Plafonds afwerken â Toren C | 5d | 2028-03-20 | 2028-03-24 | 7.3.6 | 2027-03-01 | 2027-03-05 | 3d | 0d |  |
| 7.3.8 | Deuren hang- en sluitwerk â Toren C | 4d | 2028-03-27 | 2028-03-30 | 7.3.7 | 2027-03-01 | 2027-03-04 | 3d | 0d |  |
| 7.4 | Entreehal afwerken | 6d | 2027-11-24 | 2027-12-01 | 5.4 | 2027-03-01 | 2027-03-08 | 71d | 0d |  |
| 7.5 | Fietsenstalling afwerken | 4d | 2027-12-02 | 2027-12-07 | 7.4 | 2027-03-01 | 2027-03-04 | 85d |  |  |
| 7.6 | Liftlobby's afwerken | 4d | 2027-12-02 | 2027-12-07 | 7.4 | 2027-03-01 | 2027-03-04 | 71d | 0d |  |
| 7.7 | Gemeenschappelijke trappenhuizen afwerken | 5d | 2027-12-08 | 2027-12-14 | 7.6 | 2027-03-01 | 2027-03-05 | 71d | 0d |  |
| 7.8 | Buitenschilderwerk plint gevel | 4d | 2027-12-15 | 2027-12-20 | 7.7 | 2027-03-01 | 2027-03-04 | 71d | 0d |  |
| 7.9 | Signage & bewegwijzering plaatsen | 2d | 2027-12-21 | 2027-12-22 | 7.8 | 2027-03-01 | 2027-03-02 | 71d | 0d |  |
| 7.10 | Eindschoonmaak gemeenschappelijke ruimtes | 3d | 2027-12-23 | 2027-12-27 | 7.9 | 2027-03-01 | 2027-03-03 | 71d |  |  |

| ID | Activity | Type | Duration | Start | Finish | Predecessors | Planned start | Planned finish | Total float | Free float |
| --- | --- | --- | --- | --- | --- | --- | --- | --- | --- | --- |
| 8 | **7. Terrein & parkeergarage-koppeling** |  | 5d | 2027-06-14 | 2027-07-16 |  | 2027-03-01 | 2027-03-05 | 163d | 0d |
| 8.1 | Nieuwe hoofdontsluiting aanleggen |  | 4d | 2027-06-14 | 2027-06-17 | 5.5 | 2027-03-01 | 2027-03-04 | 163d | 0d |
| 8.2 | Nieuwe hoofdontsluiting in gebruik genomen | milestone | 0d | 2027-06-18 | 2027-06-18 | 8.1 | 2027-03-01 | 2027-03-01 | 163d | 0d |
| 8.3 | Tijdelijke bouwweg opbreken |  | 3d | 2027-06-16 | 2027-06-18 | 8.2 SF | 2027-03-01 | 2027-03-03 | 183d | 20d |
| 8.4 | Rioolaansluiting terrein hoofdgebouw |  | 4d | 2027-06-18 | 2027-06-23 | 8.2 | 2027-03-01 | 2027-03-04 | 163d | 0d |
| 8.5 | Bestrating parkeerterrein |  | 6d | 2027-06-24 | 2027-07-01 | 8.4 | 2027-03-01 | 2027-03-08 | 163d | 0d |
| 8.6 | Fietsenstalling buiten plaatsen |  | 3d | 2027-07-02 | 2027-07-06 | 8.5 | 2027-03-01 | 2027-03-03 | 171d | 8d |
| 8.7 | Groenvoorziening hoofdterrein aanleggen |  | 5d | 2027-07-02 | 2027-07-08 | 8.5 | 2027-03-01 | 2027-03-05 | 163d | 0d |
| 8.8 | Buitenverlichting plaatsen |  | 3d | 2027-07-09 | 2027-07-13 | 8.7 | 2027-03-01 | 2027-03-03 | 163d | 0d |
| 8.9 | Erfafscheiding plaatsen |  | 2d | 2027-07-14 | 2027-07-15 | 8.8 | 2027-03-01 | 2027-03-02 | 163d | 0d |
| 8.10 | Parkeervakken markeren |  | 1d | 2027-07-16 | 2027-07-16 | 8.9 | 2027-03-01 | 2027-03-01 | 163d | 0d |
| 8.11 | Oplevering terrein â eindinspectie | milestone | 0d | 2027-07-16 | 2027-07-16 | 8.10, 8.3, 8.6 | 2027-03-01 | 2027-03-01 | 163d | 0d |
| 9 | **8. Oplevering** |  | 5d | 2027-07-19 | 2028-04-04 |  | 2027-03-01 | 2027-03-05 | 0d |  |
| 9.1 | Opleverkeuring â Toren A | milestone | 0d | 2028-04-04 | 2028-04-04 | 7.1.8, 8.11 | 2027-03-01 | 2027-03-01 | 0d |  |
| 9.2 | Opleverkeuring â Toren B | milestone | 0d | 2028-04-04 | 2028-04-04 | 7.2.8, 8.11 | 2027-03-01 | 2027-03-01 | 0d |  |
| 9.3 | Opleverkeuring â Toren C | milestone | 0d | 2028-03-30 | 2028-03-30 | 7.3.8, 8.11 | 2027-03-01 | 2027-03-01 | 3d |  |
| 9.4 | Documentatie-overdracht (revisietekeningen) |  | 3d | 2027-07-19 | 2027-07-21 | 8.11 | 2027-03-01 | 2027-03-03 | 163d | 0d |
| 9.5 | Sleuteloverdracht beheerder |  | 2d | 2027-08-17 | 2027-08-18 | 9.6 | 2027-03-01 | 2027-03-02 | 163d | 0d |
| 9.6 | Eindschoonmaak gemeenschappelijke ruimtes gebouw |  | 3d | 2027-07-22 | 2027-08-16 | 9.4 | 2027-03-01 | 2027-03-03 | 163d | 0d |
| 9.7 | Projectadministratie & contractuele afronding | milestone | 0d | 2027-08-18 | 2027-08-18 | 9.5 | 2027-03-01 | 2027-03-01 | 163d | 0d |
| 9.8 | Nazorgperiode gestart | milestone | 0d | 2027-08-19 | 2027-08-19 | 9.7 | 2027-03-01 | 2027-03-01 | 163d | 0d |
| 9.9 | Onderhoudscontract technische installaties starten |  | 1d | 2027-08-19 | 2027-08-19 | 9.8 | 2027-03-01 | 2027-03-01 | 163d |  |

Notes:
- 9.1: Contractuele overdracht van Toren A aan de VvE/bewoners â onafhankelijk eindpunt (géén gezamenlijk slotmijlpaal met de andere torens).
- 9.2: Contractuele overdracht van Toren B aan de VvE/bewoners â onafhankelijk eindpunt (géén gezamenlijk slotmijlpaal met de andere torens).
- 9.3: Contractuele overdracht van Toren C aan de VvE/bewoners â onafhankelijk eindpunt (géén gezamenlijk slotmijlpaal met de andere torens).
- 9.7: Contractuele/administratieve afronding (revisiedossier, beheerderoverdracht) â loopt parallel vanaf de terreinoplevering, niet gegateed door de torens (zie fase-toelichting).
