# Bouwplanning v1.0

Schedule from an IFC model, 2027-03-01 to 2027-05-04.
Verbouwing & Aanbouw Eengezinswoning

## Schedule

| ID | Activity | Type | Duration | Start | Finish | Predecessors | Planned start | Planned finish | Total float | Free float |
| --- | --- | --- | --- | --- | --- | --- | --- | --- | --- | --- |
| 1 | Start verbouwing | milestone | 0d | 2027-03-01 | 2027-03-01 |  |  |  | 4d | 0d |
| 2 | **1. Voorbereiding** |  | 5d | 2027-03-01 | 2027-03-11 |  | 2027-03-01 | 2027-03-05 | 0d |  |
| 2.1 | Bouwplaats inrichten |  | 2d | 2027-03-01 | 2027-03-02 | 1 |  |  | 4d |  |
| 2.2 | Sloop bestaande aanbouw |  | 3d | 2027-03-09 | 2027-03-11 | 2.1 | 2027-03-01 | 2027-03-03 | 0d |  |
| 3 | **2. Fundering & ruwbouw** |  | 5d | 2027-03-12 | 2027-04-06 |  | 2027-03-01 | 2027-03-05 | 0d |  |
| 3.1 | Grondwerk aanbouw |  | 3d | 2027-03-12 | 2027-03-16 | 2.2 | 2027-03-01 | 2027-03-03 | 0d |  |
| 3.2 | Fundering aanbouw |  | 4d | 2027-03-17 | 2027-03-22 | 3.1 | 2027-03-01 | 2027-03-04 | 0d |  |
| 3.3 | Begane grondvloer storten |  | 3d | 2027-03-23 | 2027-03-25 | 3.2 | 2027-03-01 | 2027-03-03 | 0d |  |
| 3.4 | Wanden opmetselen |  | 6d | 2027-03-30 | 2027-04-06 | 3.3 | 2027-03-01 | 2027-03-08 | 0d |  |
| 3.5 | Dakconstructie plaatsen |  | 4d | 2027-04-01 | 2027-04-06 | 3.4 SS+2d | 2027-03-01 | 2027-03-04 | 0d |  |
| 4 | **3. Afbouw** |  | 5d | 2027-04-07 | 2027-04-30 |  | 2027-03-01 | 2027-03-05 | 0d |  |
| 4.1 | Dakbedekking aanbrengen |  | 3d | 2027-04-07 | 2027-04-09 | 3.5 | 2027-03-01 | 2027-03-03 | 0d |  |
| 4.2 | Kozijnen plaatsen |  | 4d | 2027-04-12 | 2027-04-15 | 4.1 | 2027-03-01 | 2027-03-04 | 0d |  |
| 4.3 | Stucwerk |  | 5d | 2027-04-16 | 2027-04-22 | 4.2 | 2027-03-01 | 2027-03-05 | 0d |  |
| 4.4 | Tegelwerk |  | 4d | 2027-04-23 | 2027-04-29 | 4.3 | 2027-03-01 | 2027-03-04 | 0d |  |
| 4.5 | Schilderwerk |  | 3d | 2027-04-28 | 2027-04-30 | 4.3, 4.4 FF+1d | 2027-03-01 | 2027-03-03 | 0d |  |
| 5 | **4. Oplevering** |  | 5d | 2027-05-03 | 2027-05-04 |  | 2027-03-01 | 2027-03-05 | 0d |  |
| 5.1 | Eindschoonmaak |  | 1d | 2027-05-03 | 2027-05-03 | 4.5 | 2027-03-01 | 2027-03-01 | 0d |  |
| 5.2 | Opleveringsinspectie | milestone | 0d | 2027-05-03 | 2027-05-03 | 5.1 | 2027-03-01 | 2027-03-01 | 0d |  |
| 5.3 | Eindoplevering met bewoner |  | 1d | 2027-05-04 | 2027-05-04 | 5.2 | 2027-03-01 | 2027-03-01 | 0d |  |

Notes:
- 5.2: Verplichte opleveringsinspectie; de deadline heeft ruime marge (geen conflict).
